ID,Name,Duration,Start,Finish,Predecessors,PercentComplete,Phase,Notes
1,Complete source quality and coverage decisions,5d,2026-10-15,2026-10-21,,0,Data readiness,PROVISIONAL estimate. Submission deadline and student capacity not confirmed. No task completion claimed by schedule generation.
2,Review requirements and AI use cases,2d,2026-10-15,2026-10-16,,0,Requirements,PROVISIONAL estimate. Submission deadline and student capacity not confirmed. No task completion claimed by schedule generation.
3,Review architecture and shared interfaces,2d,2026-10-22,2026-10-23,"1,2",0,Architecture gate,PROVISIONAL estimate. Submission deadline and student capacity not confirmed. No task completion claimed by schedule generation.
4,Rebuild and validate eligible historical feature panel,3d,2026-10-26,2026-10-28,3,0,AI iteration 1,PROVISIONAL estimate. Submission deadline and student capacity not confirmed. No task completion claimed by schedule generation.
5,Apply frozen evaluation selectors and verify exclusions,1d,2026-10-29,2026-10-29,4,0,AI iteration 1,PROVISIONAL estimate. Submission deadline and student capacity not confirmed. No task completion claimed by schedule generation.
6,Fit historical-rate and interpretable ignition baselines,3d,2026-10-30,2026-11-03,5,0,AI iteration 1,PROVISIONAL estimate. Submission deadline and student capacity not confirmed. No task completion claimed by schedule generation.
7,Evaluate and review development baseline results,2d,2026-11-04,2026-11-05,6,0,AI iteration 1,PROVISIONAL estimate. Submission deadline and student capacity not confirmed. No task completion claimed by schedule generation.
8,Fit and compare the agreed boosting candidate,3d,2026-11-06,2026-11-10,7,0,AI iteration 2,PROVISIONAL estimate. Submission deadline and student capacity not confirmed. No task completion claimed by schedule generation.
9,Calibrate probabilities and freeze model decisions,2d,2026-11-11,2026-11-12,8,0,AI iteration 2,PROVISIONAL estimate. Submission deadline and student capacity not confirmed. No task completion claimed by schedule generation.
10,Run final held-out evaluation and record selection,1d,2026-11-13,2026-11-13,9,0,AI iteration 2,PROVISIONAL estimate. Submission deadline and student capacity not confirmed. No task completion claimed by schedule generation.
11,Build saved-model scoring and historical ignition map,4d,2026-11-04,2026-11-09,6,0,Application,PROVISIONAL estimate. Submission deadline and student capacity not confirmed. No task completion claimed by schedule generation.
12,Correct spread barrier and outcome-input issues,4d,2026-10-26,2026-10-29,3,0,Spread,PROVISIONAL estimate. Submission deadline and student capacity not confirmed. No task completion claimed by schedule generation.
13,Rerun calibration and held-out spread evaluation,3d,2026-10-30,2026-11-03,12,0,Spread,PROVISIONAL estimate. Submission deadline and student capacity not confirmed. No task completion claimed by schedule generation.
14,Update spread viewer with evaluation limits,3d,2026-11-04,2026-11-06,13,0,Application,PROVISIONAL estimate. Submission deadline and student capacity not confirmed. No task completion claimed by schedule generation.
15,Integrate and verify historical end-to-end demonstration,3d,2026-11-16,2026-11-18,"10,11,14",0,Integration,PROVISIONAL estimate. Submission deadline and student capacity not confirmed. No task completion claimed by schedule generation.
16,Build HRDPS adapter and recent-weather FWI state bridge,5d,2026-11-19,2026-11-25,15,0,Optional live increment,PROVISIONAL estimate. Submission deadline and student capacity not confirmed. No task completion claimed by schedule generation.
17,Verify historical-to-live feature compatibility,3d,2026-11-26,2026-11-30,16,0,Optional live increment,PROVISIONAL estimate. Submission deadline and student capacity not confirmed. No task completion claimed by schedule generation.
18,Complete regression and robustness checks,3d,2026-12-01,2026-12-03,17,0,Verification,PROVISIONAL estimate. Submission deadline and student capacity not confirmed. No task completion claimed by schedule generation.
19,Prepare final technical report and demonstration,5d,2026-12-04,2026-12-10,18,0,Delivery,PROVISIONAL estimate. Submission deadline and student capacity not confirmed. No task completion claimed by schedule generation.
20,Resolve remaining defects and retain contingency,3d,2026-12-11,2026-12-15,19,0,Contingency,PROVISIONAL estimate. Submission deadline and student capacity not confirmed. No task completion claimed by schedule generation.
21,Provisional readiness checkpoint - not a submission deadline,0d,2026-12-16,2026-12-16,20,0,Milestone,PROVISIONAL estimate. Submission deadline and student capacity not confirmed. No task completion claimed by schedule generation.
